# DFS人力资源系统重构项目

Schedule from a web Gantt chart, 2024-07-01 to 2026-06-30.
Saturdays and Sundays are off

## Schedule

| ID | WBS | Task | Type | Duration | Start | Finish | Complete | inPeople |
| --- | --- | --- | --- | --- | --- | --- | --- | --- |
| 2 | 1 | **项目商务阶段** |  | 23d | 2024-07-01 | 2024-07-31 |  |  |
| 3 | 1.1 | 技术协议书编写 |  | 5d | 2024-07-01 | 2024-07-05 |  | 陶智、顾恒琪 |
| 4 | 1.2 | 合同签署确认 | fixed end | 23d | 2024-07-01 | 2024-07-31 |  | 联友、盖雅 |
| 5 | 2 | **项目准备阶段** |  | 55d | 2024-07-01 | 2024-09-13 | 3% |  |
| 6 | 2.1 | **建立项目组工作环境** |  | 3d | 2024-07-01 | 2024-07-03 | 100% |  |
| 7 | 2.1.1 | 办公室和会议室 |  | 1d | 2024-07-01 | 2024-07-01 | 100% | 陶智 |
| 8 | 2.1.2 | 门禁、网络、通讯工具、饭卡、SVN |  | 3d | 2024-07-01 | 2024-07-03 | 100% | 陶智 |
| 9 | 2.1.3 | 其他办公设备和后勤保障（打印等） |  | 3d | 2024-07-01 | 2024-07-03 | 100% | 陶智 |
| 10 | 2.2 | **确定项目组机构** |  | 20d | 2024-07-01 | 2024-07-26 |  |  |
| 11 | 2.2.1 | 东风南方项目组织架构搭建 |  | 5d | 2024-07-01 | 2024-07-05 |  | 丁敏、顾恒琪 |
| 12 | 2.2.2 | 盖雅项目组织架构搭建 |  | 5d | 2024-07-01 | 2024-07-05 |  | 丁敏、顾恒琪 |
| 13 | 2.2.3 | 东风南方项目组成员和关键用户确认 |  | 15d | 2024-07-08 | 2024-07-26 |  | 丁敏、顾恒琪 |
| 14 | 2.2.4 | 盖雅项目组成员确认 |  | 15d | 2024-07-08 | 2024-07-26 |  | 丁敏、顾恒琪 |
| 15 | 2.3 | **项目章程编写** |  | 5d | 2024-07-01 | 2024-07-05 |  |  |
| 16 | 2.3.1 | 制定项目管理的标准与规范 |  | 5d | 2024-07-01 | 2024-07-05 |  | 顾恒琪、熊江红 |
| 17 | 2.3.2 | 确定项目沟通交流策略及计划 |  | 5d | 2024-07-01 | 2024-07-05 |  | 顾恒琪、熊江红 |
| 18 | 2.3.3 | 项目实施方法及管理方案 |  | 5d | 2024-07-01 | 2024-07-05 |  | 顾恒琪、熊江红 |
| 19 | 2.3.4 | 定义项目文件管理方法 |  | 5d | 2024-07-01 | 2024-07-05 |  | 顾恒琪、熊江红 |
| 20 | 2.3.5 | 项目问题管理方案 |  | 5d | 2024-07-01 | 2024-07-05 |  | 顾恒琪、熊江红 |
| 21 | 2.4 | **实施计划编写** |  | 25d | 2024-07-01 | 2024-08-02 |  |  |
| 22 | 2.4.1 | 定义项目实施目标 |  | 10d | 2024-07-22 | 2024-08-02 |  | 丁敏、顾恒琪 |
| 23 | 2.4.2 | 确定项目实施策略及方法 |  | 10d | 2024-07-22 | 2024-08-02 |  | 丁敏、顾恒琪 |
| 24 | 2.4.3 | 制定并完善项目工作计划 |  | 25d | 2024-07-01 | 2024-08-02 |  | 顾恒琪 |
| 25 | 2.5 | **业务现状沟通** |  | 16d | 2024-07-05 | 2024-07-26 |  |  |
| 26 | 2.5.1 | 现状问卷准备 |  | 3d | 2024-07-05 | 2024-07-09 |  | 顾恒琪、熊江红 |

| ID | WBS | Task | Type | Duration | Start | Finish | inPeople |
| --- | --- | --- | --- | --- | --- | --- | --- |
| 27 | 2.5.2 | **集团现状业务沟通（含总部7个部门）** |  | 3d | 2024-07-10 | 2024-07-12 | 顾恒琪、熊江红 |
| 28 | 2.5.2.1 | 财务部 |  | 1d | 2024-07-10 | 2024-07-10 |  |
| 29 | 2.5.2.2 | 办公室 |  | 1d | 2024-07-10 | 2024-07-10 |  |
| 30 | 2.5.2.3 | 经营规划部 |  | 1d | 2024-07-11 | 2024-07-11 |  |
| 31 | 2.5.2.4 | 汽车营销事业部 |  | 1d | 2024-07-11 | 2024-07-11 |  |
| 32 | 2.5.2.5 | 党群工作部 |  | 1d | 2024-07-12 | 2024-07-12 |  |
| 33 | 2.5.2.6 | 纪检监察部 |  | 1d | 2024-07-12 | 2024-07-12 |  |
| 34 | 2.5.2.7 | 人力资源部 |  | 1d | 2024-07-12 | 2024-07-12 |  |
| 35 | 2.5.3 | **重点二级单位现状业务沟通** |  | 5d | 2024-07-15 | 2024-07-19 | 顾恒琪、熊江红 |
| 36 | 2.5.3.1 | 广州实业 |  | 1d | 2024-07-15 | 2024-07-15 |  |
| 37 | 2.5.3.2 | 锦上技研 |  | 1d | 2024-07-16 | 2024-07-16 |  |
| 38 | 2.5.3.3 | 联友出行 |  | 1d | 2024-07-17 | 2024-07-17 |  |
| 39 | 2.5.3.4 | 数据公司 |  | 1d | 2024-07-18 | 2024-07-18 |  |
| 40 | 2.5.3.5 | 联友科技 |  | 1d | 2024-07-19 | 2024-07-19 |  |
| 41 | 2.5.3.6 | 营销板块典型单位 |  | 1d | 2024-07-19 | 2024-07-19 |  |
| 42 | 2.5.4 | 集团现状业务沟通结果分析 |  | 5d | 2024-07-22 | 2024-07-26 | 顾恒琪、熊江红 |
| 43 | 2.6 | **管理层汇报及沟通** |  | 10d | 2024-07-22 | 2024-08-02 |  |
| 44 | 2.6.1 | 人力资源部领导汇报 |  | 5d | 2024-07-22 | 2024-07-26 |  |
| 45 | 2.6.2 | 高层访谈和愿景研讨 |  | 5d | 2024-07-29 | 2024-08-02 |  |
| 46 | 2.7 | **项目启动会** |  | 25d | 2024-07-15 | 2024-08-16 |  |
| 47 | 2.7.1 | 启动会材料准备 |  | 15d | 2024-07-15 | 2024-08-02 | 顾恒琪、熊江红 |
| 48 | 2.7.2 | 项目启动会 | fixed end | 5d | 2024-08-12 | 2024-08-16 | DFS、盖雅 |
| 49 | 2.8 | **系统产品安装** |  | 50d | 2024-07-08 | 2024-09-13 |  |
| 50 | 2.8.1 | 定义环境需求 |  | 5d | 2024-07-08 | 2024-07-12 | 顾恒琪、顾浩 |
| 51 | 2.8.2 | 定义和分配团队系统访问权限 |  | 5d | 2024-07-08 | 2024-07-12 | 顾恒琪、顾浩 |
| 52 | 2.8.3 | 定义技术标准和流程 |  | 5d | 2024-07-08 | 2024-07-12 | 顾恒琪、顾浩 |
| 53 | 2.8.4 | 硬件蓝图设计文档编写 |  | 5d | 2024-07-08 | 2024-07-12 | 顾恒琪、顾浩 |
| 54 | 2.8.5 | 硬件环境准备 |  | 5d | 2024-08-26 | 2024-08-30 | 联友 |
| 55 | 2.8.6 | 测试、生产环境系统安装和部署 |  | 10d | 2024-09-02 | 2024-09-13 | 顾浩 |
| 56 | 3 | 系统切换阶段 |  | 51d | 2024-07-05 | 2024-09-13 |  |

| ID | WBS | Task | Duration | Start | Finish | Predecessors | inPeople | Status |
| --- | --- | --- | --- | --- | --- | --- | --- | --- |
| 57 | 4 | **业务需求调研** | 35d | 2024-07-29 | 2024-09-13 |  |  |  |
| 58 | 4.1 | 调研问卷准备 | 15d | 2024-07-29 | 2024-08-16 | 42 | 熊江红 | waiting |
| 59 | 4.2 | 调研问卷下发 | 1d | 2024-08-19 | 2024-08-19 | 48 | 熊江红 | waiting |
| 60 | 4.3 | 调研问卷回收 | 2d | 2024-08-20 | 2024-08-21 | 59 | 熊江红 | waiting |
| 61 | 4.4 | 调研问卷分析 | 2d | 2024-08-22 | 2024-08-23 | 60 | 熊江红 | waiting |
| 62 | 4.5 | 二级单位访谈 | 15d | 2024-08-26 | 2024-09-13 | 61 | 熊江红 | waiting |
| 63 | 5 | **数据标准调研** | 30d | 2024-07-22 | 2024-08-30 |  |  |  |
| 64 | 5.1 | 制作数据字典收集模板 | 5d | 2024-07-22 | 2024-07-26 |  | 徐辉 |  |
| 65 | 5.2 | 数据字典收集模板下发 | 1d | 2024-07-29 | 2024-07-29 | 64 | 顾恒琪 | waiting |
| 66 | 5.3 | 数据字典回收 | 4d | 2024-07-30 | 2024-08-02 | 65 | 顾恒琪 | waiting |
| 67 | 5.4 | 组织用户统一平台访谈 | 5d | 2024-08-12 | 2024-08-16 |  | 顾恒琪 |  |
| 68 | 5.5 | 其他关联系统访谈 | 10d | 2024-08-19 | 2024-08-30 | 67 | 顾恒琪 | waiting |
| 69 | 6 | 系统蓝图阶段 | 105d | 2024-07-08 | 2024-11-29 |  |  |  |
| 70 | 7 | **系统标准功能搭建** | 30d | 2024-09-16 | 2024-10-25 | 55 |  | waiting |
| 71 | 7.1 | 开发环境配置 | 10d | 2024-09-16 | 2024-09-27 |  |  | waiting |
| 72 | 7.2 | 测试环境配置 | 10d | 2024-09-30 | 2024-10-11 | 71 |  | waiting |
| 73 | 7.3 | 生产环境配置 | 5d | 2024-10-14 | 2024-10-18 | 72 |  | waiting |
| 74 | 7.4 | 环境功能验证 | 5d | 2024-10-21 | 2024-10-25 | 73 |  | waiting |
| 75 | 8 | 组织人事业务咨询 | 25d | 2024-09-16 | 2024-10-18 | 62 |  | waiting |
| 76 | 9 | **数据标准梳理** | 25d | 2024-08-19 | 2024-09-20 | 67 |  | waiting |
| 77 | 9.1 | 数据标准制定 | 15d | 2024-08-19 | 2024-09-06 |  |  | waiting |
| 78 | 9.2 | 数据标准确认和调整 | 10d | 2024-09-09 | 2024-09-20 | 77 |  | waiting |
| 79 | 9.3 | 数据收集模板制作 | 5d | 2024-09-16 | 2024-09-20 |  |  | waiting |
| 80 | 10 | **系统蓝图设计和确认** | 20d | 2024-10-21 | 2024-11-15 |  |  | waiting |
| 81 | 10.1 | 蓝图设计 | 10d | 2024-10-21 | 2024-11-01 |  |  | waiting |
| 82 | 10.2 | 蓝图确认及调整 | 10d | 2024-11-04 | 2024-11-15 | 81 |  | waiting |

| ID | WBS | Task | Type | Duration | Start | Finish | Predecessors | Status |
| --- | --- | --- | --- | --- | --- | --- | --- | --- |
| 83 | 11 | **数据收集** |  | 15d | 2024-09-23 | 2024-10-11 | 78 | waiting |
| 84 | 11.1 | 数据收集模板下发 |  | 1d | 2024-09-23 | 2024-09-23 | 79 | waiting |
| 85 | 11.2 | 数据回收和校验 |  | 14d | 2024-09-24 | 2024-10-11 | 84 | waiting |
| 86 | 12 | 数据清洗转换和导入 |  | 20d | 2024-10-28 | 2024-11-22 |  | waiting |
| 87 | 13 | 系统标准功能培训 |  | 4d | 2024-11-25 | 2024-11-28 |  | waiting |
| 88 | 14 | 系统切换 | fixed end | 1d | 2024-11-29 | 2024-11-29 |  | waiting |
| 89 | 15 | 业务线上化阶段 |  | 130d | 2024-11-25 | 2025-05-23 | 86 | waiting |
| 90 | 16 | 项目验收阶段 |  | 21d | 2025-06-02 | 2025-06-30 |  |  |
| 91 | 17 | 上线支持阶段 |  | 261d | 2025-07-01 | 2026-06-30 |  |  |
